# Program Master Schedule: Phases 0 to 5 and Gates G0 to G5

Schedule from MS Project XML, 2027-01-04 to 2027-12-03.

## Calendars

- Standard: Mon-Fri 08:00-12:00, 13:00-17:00; Sat-Sun off.

## Schedule

| ID | WBS | Task | Type | Duration | Start | Finish | Predecessors | Constraint |
| --- | --- | --- | --- | --- | --- | --- | --- | --- |
| 1 | 1 | **Phase 0 — Pre-flight** |  |  | 2027-01-04 | 2027-01-29 |  |  |
| 2 | 1.1 | D01 Approve Phase 0 and name the sponsor and steward | milestone | 0d | 2027-01-04 | 2027-01-04 |  |  |
| 3 | 1.2 | P0.1 Charter accepted; owners named in the decision matrix |  | 3d | 2027-01-04 | 2027-01-06 | 2 |  |
| 4 | 1.3 | P0.2 Platform host built, repository seeded, host connected through Arc |  | 7d | 2027-01-07 | 2027-01-15 | 3 |  |
| 5 | 1.4 | P0.3 Least-privilege service principals for Entra ID, Intune and Arc |  | 3d | 2027-01-07 | 2027-01-11 | 3 |  |
| 6 | 1.5 | P0.4 Read-only assessment run and committed |  | 10d | 2027-01-18 | 2027-01-29 | 4, 5 |  |
| 7 | 1.6 | P0.5 Transactions profiled for applications proposed to move from their data |  | 8d | 2027-01-07 | 2027-01-18 | 3 |  |
| 8 | 1.7 | P0.6 Change process asks whether each change adds an AD dependency; exceptions to the AO |  | 3d | 2027-01-07 | 2027-01-11 | 3 |  |
| 9 | 1.8 | D11 Provisional target end state: AD retired, or a dated Kerberos island | milestone | 0d | 2027-01-29 | 2027-01-29 | 6 |  |
| 10 | 1.9 | G0 — Ready to Plan | milestone | 0d | 2027-01-29 | 2027-01-29 | 6, 7, 8, 9 |  |
| 11 | 2 | **Phase 1 — Foundation** |  |  | 2027-02-01 | 2027-02-26 |  |  |
| 12 | 2.1 | D02 Authoritative source for each attribute that drives access | milestone | 0d | 2027-01-29 | 2027-01-29 | 10 |  |
| 13 | 2.2 | P1.1 Attribute taxonomy finalized (M-014) |  | 5d | 2027-02-01 | 2027-02-05 | 12 |  |
| 14 | 2.3 | P1.2 Dynamic group design tested; enterprise groups and administrative units built (M-015) |  | 8d | 2027-02-08 | 2027-02-17 | 13 |  |
| 15 | 2.4 | P1.3 Intune policy design complete; pilot profiles staged (M-016) |  | 5d | 2027-02-18 | 2027-02-24 | 14 |  |
| 16 | 2.5 | X-IDL HR-to-cloud provisioning live for the foundation scope | milestone | 0d | 2027-02-24 | 2027-02-24 |  | start no earlier than 2027-02-24 |
| 17 | 2.6 | P1.5 Conditional Access design running in report-only (M-017) |  | 10d | 2027-02-01 | 2027-02-12 | 10 |  |
| 18 | 2.7 | D03 Enforce the Conditional Access baseline | milestone | 0d | 2027-02-12 | 2027-02-12 | 17 |  |
| 19 | 2.8 | P1.6 Baseline enforced; emergency access accounts vaulted and tested |  | 3d | 2027-02-15 | 2027-02-17 | 18 |  |
| 20 | 2.9 | P1.7 Sync and DNS Private Resolver designs; resolver deployed (M-018, M-019) |  | 10d | 2027-02-01 | 2027-02-12 | 10 |  |
| 21 | 2.10 | D04 Root of trust for device certificates | milestone | 0d | 2027-01-29 | 2027-01-29 | 10 |  |
| 22 | 2.11 | P1.8 Cloud PKI design; issuing CA created (M-020) |  | 8d | 2027-02-08 | 2027-02-17 | 21, 13 |  |
| 23 | 2.12 | P1.9 IPAM covers the platform host and Tier 0 |  | 10d | 2027-02-01 | 2027-02-12 | 10 |  |
| 24 | 2.13 | P1.10 Single sign-on; FIDO2 and passkeys open to Tier 0 administrators |  | 8d | 2027-02-01 | 2027-02-10 | 10 |  |
| 25 | 2.14 | P1.11 Every High assessment finding remediated and re-scanned |  | 15d | 2027-02-01 | 2027-02-19 | 10 |  |
| 26 | 2.15 | D05 Choose the pilot division | milestone | 0d | 2027-01-29 | 2027-01-29 | 10 |  |
| 27 | 2.16 | P1.12 Design review approved (M-021) |  | 2d | 2027-02-25 | 2027-02-26 | 15, 20, 22, 26 |  |
| 28 | 2.17 | G1 — Foundation Complete | milestone | 0d | 2027-02-26 | 2027-02-26 | 27, 16, 19, 23, 24, 25 |  |

Notes:
- 2: Owner or approver: Executive sponsor and CIO / Options: Approve the four-week pre-flight; defer / If decided late: Nothing starts; the external clocks keep running / Source: ../start-here.md
- 3: Owner or approver: Program office / Source: ../books/b00-orientation/03-the-charter.md
- 4: Owner or approver: Platform teams / Source: ../books/b01-transformation-arc/03-platform-foundation.md
- 5: Owner or approver: Platform teams / Source: ../books/b01-transformation-arc/12-migration-roadmap.md#phase-0-pre-flight-weeks-14
- 6: Owner or approver: Program office / Source: ../books/b00-orientation/08-pre-flight-and-assessment.md
- 7: Owner or approver: App owners / Source: ../books/b01-transformation-arc/10-analyzing-the-estate.md#profiling-transactions-before-separation
- 8: Owner or approver: Program office / Source: ../books/b13-governance/04-change-control-and-provenance.md#no-new-dependencies-on-active-directory
- 9: Owner or approver: Executive sponsor and CIO / Options: AD retired completely; a Kerberos island for named workloads, with an end date / If decided late: G0 can't pass: owners and budgets plan without a stated goal / Source: ../books/b01-transformation-arc/12-migration-roadmap.md#phase-0-pre-flight-weeks-14
- 10: Owner or approver: Steward (backup: executive sponsor) / Criteria: Platform host operational; assessment committed; no open priority-one findings; provisional target end state recorded; no-new-AD-dependency rule in force / Source: ../books/b01-transformation-arc/12-migration-roadmap.md#gates-rollback-and-authority
- 12: Owner or approver: HR / Options: HR system per attribute; a named alternative with a dated exception / If decided late: The taxonomy can't be approved, and the whole critical path waits / Source: ../books/b01-transformation-arc/09-who-leads-the-transformation.md#decision-rights-across-the-program
- 13: Owner or approver: Platform teams / Source: ../books/b00-orientation/09-design-pilot-and-rollout.md#design-milestones
- 14: Owner or approver: Platform teams / Source: ../books/b00-orientation/09-design-pilot-and-rollout.md#design-milestones
- 15: Owner or approver: Platform teams / Source: ../books/b00-orientation/09-design-pilot-and-rollout.md#design-milestones
- 16: Owner or approver: Identity Lifecycle project / If decided late: G1 fails its HR-feed criterion and waits / Source: identity-lifecycle.md
- 17: Owner or approver: CISO / Source: ../books/b00-orientation/09-design-pilot-and-rollout.md#design-milestones
- 18: Owner or approver: CISO / Options: Enforce; extend report-only; enforce with dated exceptions / If decided late: G1 can't pass: the baseline must be enforced / Source: ../books/b01-transformation-arc/12-migration-roadmap.md#phase-1-foundation-weeks-58
- 19: Owner or approver: Platform teams / Source: ../books/b01-transformation-arc/12-migration-roadmap.md#phase-1-foundation-weeks-58
- 20: Owner or approver: Platform teams / Source: ../books/b00-orientation/09-design-pilot-and-rollout.md#design-milestones
- 21: Owner or approver: Program office / Options: Cloud PKI root; bring-your-own CA / If decided late: The PKI design and the pilot certificates wait / Source: ../books/b07-pki/index.md
- 22: Owner or approver: Platform teams / Source: ../books/b00-orientation/09-design-pilot-and-rollout.md#design-milestones
- 23: Owner or approver: Platform teams / Source: ../books/b08-ddi/10-migration-sequence.md
- 24: Owner or approver: Platform teams / Source: ../books/b04-access/index.md
- 25: Owner or approver: Platform teams / Source: ../books/b00-orientation/09-design-pilot-and-rollout.md#foundation-build-and-pre-pilot-readiness
- 26: Owner or approver: Program office / Options: IT (tolerates disruption best); another division plus volunteers / If decided late: Pilot groups can't be built; G1 fails its pilot-readiness criterion / Source: ../books/b00-orientation/09-design-pilot-and-rollout.md#scope
- 27: Owner or approver: Steward / Source: ../books/b00-orientation/09-design-pilot-and-rollout.md#design-milestones
- 28: Owner or approver: Steward / Criteria: Designs approved; groups and AUs drift-clean; baseline Conditional Access enforced; emergency access tested; Tier 0 in IPAM; HR feed live for the foundation scope; High findings closed / Source: ../books/b00-orientation/09-design-pilot-and-rollout.md#gate-g1-foundation-complete

| ID | WBS | Task | Type | Duration | Start | Finish | Predecessors |
| --- | --- | --- | --- | --- | --- | --- | --- |
| 29 | 3 | **Phase 2 — Pilot division** |  |  | 2027-03-01 | 2027-04-23 |  |
| 30 | 3.1 | D06 Device pattern for each pilot cohort | milestone | 0d | 2027-02-26 | 2027-02-26 | 28 |
| 31 | 3.2 | P2.1 Sync deployed; pilot attributes, groups, AUs and delegated roles live (M-022) |  | 10d | 2027-03-01 | 2027-03-12 | 28 |
| 32 | 3.3 | P2.2 Pilot Conditional Access and Intune policies assigned (M-024, M-025) |  | 5d | 2027-03-15 | 2027-03-19 | 31 |
| 33 | 3.4 | P2.3 Pilot devices moved by pattern (M-023) |  | 8d | 2027-03-22 | 2027-03-31 | 32, 30 |
| 34 | 3.5 | P2.4 First migrated GPOs unlinked from the pilot OUs |  | 5d | 2027-04-01 | 2027-04-07 | 33 |
| 35 | 3.6 | P2.5 PIM for every pilot administrator (M-026) |  | 5d | 2027-03-15 | 2027-03-19 | 31 |
| 36 | 3.7 | P2.6 Division DNS migrated, DHCP re-homed, hybrid resolution validated (M-027) |  | 15d | 2027-03-01 | 2027-03-19 | 28 |
| 37 | 3.8 | P2.7 Cloud PKI certificates issued; Wi-Fi and VPN verified (M-028) |  | 7d | 2027-04-01 | 2027-04-09 | 33 |
| 38 | 3.9 | P2.8 Certificate-based authentication for PIV and CAC holders (M-029) |  | 8d | 2027-03-15 | 2027-03-24 | 31 |
| 39 | 3.10 | P2.9 Pilot servers under Arc with machine configuration (M-030) |  | 10d | 2027-03-01 | 2027-03-12 | 28 |
| 40 | 3.11 | P2.10 Rollback rehearsed surface by surface |  | 3d | 2027-04-01 | 2027-04-05 | 33 |
| 41 | 3.12 | P2.11 Drift-clean hold (14 days, illustrative); success criteria met (M-031) |  | 10d | 2027-04-12 | 2027-04-23 | 34, 35, 36, 37, 38, 39, 40 |
| 42 | 3.13 | P2.12 Retrospective and runbook updates committed |  | 5d | 2027-04-19 | 2027-04-23 | 41SS+5d |
| 43 | 3.14 | G2 — Pilot Clean | milestone | 0d | 2027-04-23 | 2027-04-23 | 41, 42 |
| 44 | 4 | **Phase 3 — General rollout** |  |  | 2027-04-26 | 2027-09-10 |  |
| 45 | 4.1 | D07 Wave plan: which divisions, in which order | milestone | 0d | 2027-04-23 | 2027-04-23 | 43 |
| 46 | 4.2 | P3.1 Wave 1, first region, about 25% (M-032) |  | 22d | 2027-04-26 | 2027-05-25 | 45 |
| 47 | 4.3 | P3.2 Wave 2, about 50% cumulative (M-033) |  | 22d | 2027-05-26 | 2027-06-24 | 46 |
| 48 | 4.4 | P3.3 Wave 3, about 75% cumulative (M-034) |  | 22d | 2027-06-25 | 2027-07-26 | 47 |
| 49 | 4.5 | P3.4 Wave 4, everything remaining or excepted (M-035) |  | 22d | 2027-07-27 | 2027-08-25 | 48 |
| 50 | 4.6 | P3.5 GPO links off migrated OUs after 7 clean days (M-036) |  | 5d | 2027-08-19 | 2027-08-25 | 49SS+17d |
| 51 | 4.7 | P3.6 Attribute coverage at 100%; exception register reconciled (M-037) |  | 12d | 2027-08-26 | 2027-09-10 | 49 |
| 52 | 4.8 | P3.7 Every server Arc-connected or excepted |  | 60d | 2027-04-26 | 2027-07-16 | 43 |
| 53 | 4.9 | G3 — Rollout Complete | milestone | 0d | 2027-09-10 | 2027-09-10 | 50, 51, 52 |

Notes:
- 30: Owner or approver: Program office / Options: New devices Entra joined; existing devices reset and re-enrolled; hybrid joined only with a cut date / If decided late: Pilot devices can't move; the critical path waits / Source: ../books/b05-devices/02-the-hybrid-join-trap.md
- 31: Owner or approver: Platform teams / Source: ../books/b00-orientation/09-design-pilot-and-rollout.md#milestones
- 32: Owner or approver: Platform teams / Source: ../books/b00-orientation/09-design-pilot-and-rollout.md#milestones
- 33: Owner or approver: Platform teams / Source: ../books/b00-orientation/09-design-pilot-and-rollout.md#milestones
- 34: Owner or approver: Platform teams / Source: ../books/b05-devices/07-the-gpo-sunset-program.md
- 35: Owner or approver: Platform teams / Source: ../books/b00-orientation/09-design-pilot-and-rollout.md#milestones
- 36: Owner or approver: Platform teams / Source: ../books/b08-ddi/10-migration-sequence.md
- 37: Owner or approver: Platform teams / Source: ../books/b00-orientation/09-design-pilot-and-rollout.md#milestones
- 38: Owner or approver: Platform teams / Source: ../books/b00-orientation/09-design-pilot-and-rollout.md#milestones
- 39: Owner or approver: Platform teams / Source: ../books/b05-devices/09-servers-under-azure-arc.md
- 40: Owner or approver: Platform teams / Source: ../books/b00-orientation/09-design-pilot-and-rollout.md#rollback-surface-by-surface
- 41: Owner or approver: Program office / Source: ../books/b00-orientation/09-design-pilot-and-rollout.md#gate-g2-pilot-clean
- 42: Owner or approver: Program office / Source: ../books/b00-orientation/09-design-pilot-and-rollout.md#gate-g2-pilot-clean
- 43: Owner or approver: Steward and executive sponsor (co-signed) / Criteria: Zero drift for the hold period; no AD-only users and no hybrid-joined PC without a cut date; no unresolved rollback trigger; retrospective committed / Source: ../books/b00-orientation/09-design-pilot-and-rollout.md#gate-g2-pilot-clean
- 45: Owner or approver: Executive sponsor and steering committee / Options: By region, lowest risk first; by department / If decided late: Wave 1 can't start; the critical path waits / Source: ../books/b00-orientation/09-design-pilot-and-rollout.md#waves-defined-by-attribute-values
- 46: Owner or approver: Platform teams / Source: ../books/b00-orientation/09-design-pilot-and-rollout.md#milestones-1
- 47: Owner or approver: Platform teams / Source: ../books/b00-orientation/09-design-pilot-and-rollout.md#milestones-1
- 48: Owner or approver: Platform teams / Source: ../books/b00-orientation/09-design-pilot-and-rollout.md#milestones-1
- 49: Owner or approver: Platform teams / Source: ../books/b00-orientation/09-design-pilot-and-rollout.md#milestones-1
- 50: Owner or approver: Platform teams / Source: ../books/b00-orientation/09-design-pilot-and-rollout.md#milestones-1
- 51: Owner or approver: Program office / Source: ../books/b00-orientation/09-design-pilot-and-rollout.md#gate-g3-rollout-complete
- 52: Owner or approver: Platform teams / Source: ../books/b05-devices/09-servers-under-azure-arc.md
- 53: Owner or approver: Executive sponsor and steering committee / Criteria: Every division past its exit gate; every HR-listed employee with valid attributes; every PC cloud-joined and every server Arc-connected, or excepted; zero cross-division drift / Source: ../books/b01-transformation-arc/12-migration-roadmap.md#phase-3-general-rollout-weeks-1736

| ID | WBS | Task | Type | Duration | Start | Finish | Predecessors |
| --- | --- | --- | --- | --- | --- | --- | --- |
| 54 | 5 | **Phase 4 — Legacy retirement** |  |  | 2027-04-26 | 2027-11-05 |  |
| 55 | 5.1 | D08 End dates for legacy authentication and NTLM | milestone | 0d | 2027-04-23 | 2027-04-23 | 43 |
| 56 | 5.2 | P4.1 Migrated GPOs retired |  | 5d | 2027-09-13 | 2027-09-17 | 53 |
| 57 | 5.3 | P4.2 OU-based security groups retired |  | 5d | 2027-09-20 | 2027-09-24 | 56 |
| 58 | 5.4 | P4.3 AD-integrated DNS zones moved, except the domain's own zones |  | 15d | 2027-09-13 | 2027-10-01 | 53 |
| 59 | 5.5 | P4.4 AD-authorized DHCP retired |  | 5d | 2027-10-04 | 2027-10-08 | 58 |
| 60 | 5.6 | P4.5 User and device issuance off AD CS; smart-card logon GPO retired |  | 15d | 2027-09-13 | 2027-10-01 | 53 |
| 61 | 5.7 | P4.6 AD-bound service principal names migrated, retired or islanded, app by app |  | 30d | 2027-09-13 | 2027-10-22 | 53, 55 |
| 62 | 5.8 | P4.7 AD authentication volume measured below the agreed threshold |  | 10d | 2027-10-25 | 2027-11-05 | 61, 57, 59, 60 |
| 63 | 5.9 | G4 — Legacy Quiet | milestone | 0d | 2027-11-05 | 2027-11-05 | 62 |
| 64 | 6 | **Phase 5 — AD DS retirement** |  |  | 2027-09-13 | 2027-12-03 |  |
| 65 | 6.1 | D09 Confirm or revise the target end state set at G0 (D11) | milestone | 0d | 2027-09-10 | 2027-09-10 | 53, 9 |
| 66 | 6.2 | D10 Retention of AD-era logs and records | milestone | 0d | 2027-09-10 | 2027-09-10 | 53 |
| 67 | 6.3 | P5.1 AD changes frozen; final assessment and evidence packet |  | 5d | 2027-11-08 | 2027-11-12 | 63 |
| 68 | 6.4 | P5.2 Domain controllers without operations master roles demoted |  | 5d | 2027-11-15 | 2027-11-19 | 67, 65 |
| 69 | 6.5 | P5.3 Remaining domain controllers demoted or islanded; domain zones moved or retired |  | 5d | 2027-11-22 | 2027-11-26 | 68 |
| 70 | 6.6 | P5.4 VMs decommissioned; final state archived; retirement record committed |  | 5d | 2027-11-29 | 2027-12-03 | 69, 66 |
| 71 | 6.7 | G5 — AD Retired | milestone | 0d | 2027-12-03 | 2027-12-03 | 70 |

Notes:
- 55: Owner or approver: Authorizing official / Options: A dated end per protocol; a dated, risk-accepted exception per application / If decided late: Application owners have no date to plan against; SPN retirement slips / Source: ../books/b01-transformation-arc/09-who-leads-the-transformation.md#decision-rights-across-the-program
- 56: Owner or approver: Platform teams / Source: ../books/b01-transformation-arc/12-migration-roadmap.md#phase-4-legacy-retirement-weeks-3744
- 57: Owner or approver: Platform teams / Source: ../books/b01-transformation-arc/12-migration-roadmap.md#phase-4-legacy-retirement-weeks-3744
- 58: Owner or approver: Platform teams / Source: ../books/b08-ddi/10-migration-sequence.md
- 59: Owner or approver: Platform teams / Source: ../books/b01-transformation-arc/12-migration-roadmap.md#phase-4-legacy-retirement-weeks-3744
- 60: Owner or approver: Platform teams / Source: ../books/b07-pki/07-coexistence-and-migration.md
- 61: Owner or approver: App owners / Source: ../books/b01-transformation-arc/12-migration-roadmap.md#phase-4-legacy-retirement-weeks-3744
- 62: Owner or approver: Program office / Source: ../books/b01-transformation-arc/12-migration-roadmap.md#phase-4-legacy-retirement-weeks-3744
- 63: Owner or approver: Steward (backup: executive sponsor) / Criteria: Only the minimum GPOs; no AD security groups in use; every zone but the domain's moved; user and device issuance off AD CS; every SPN migrated, retired or islanded; AD authentication below threshold / Source: ../books/b01-transformation-arc/12-migration-roadmap.md#phase-4-legacy-retirement-weeks-3744
- 65: Owner or approver: Executive sponsor and CIO / Options: Confirm the G0 target; revise it with what Phase 4 left: retire completely, or keep a documented island with an end-of-life date / If decided late: The demotion sequence can't be planned / Source: ../books/b01-transformation-arc/12-migration-roadmap.md#phase-5-ad-ds-retirement-weeks-4548
- 66: Owner or approver: Records officer / Options: Retention schedule and archive location approved / If decided late: Domain controllers can't be decommissioned: their logs can't be recovered afterward / Source: ../books/b01-transformation-arc/09-who-leads-the-transformation.md#decision-rights-across-the-program
- 67: Owner or approver: Program office / Source: ../books/b01-transformation-arc/12-migration-roadmap.md#phase-5-ad-ds-retirement-weeks-4548
- 68: Owner or approver: Platform teams / Source: ../books/b01-transformation-arc/12-migration-roadmap.md#phase-5-ad-ds-retirement-weeks-4548
- 69: Owner or approver: Platform teams / Source: ../books/b01-transformation-arc/12-migration-roadmap.md#phase-5-ad-ds-retirement-weeks-4548
- 70: Owner or approver: Platform teams / Source: ../books/b01-transformation-arc/12-migration-roadmap.md#phase-5-ad-ds-retirement-weeks-4548
- 71: Owner or approver: Executive sponsor and CIO / Criteria: Domain controllers decommissioned or a dated Kerberos island; evidence packet in the repository and the SIEM; no production dependency on AD authentication / Source: ../books/b01-transformation-arc/12-migration-roadmap.md#phase-5-ad-ds-retirement-weeks-4548
